# System śledzenia koni resources

Schedule from MS Project, 2022-07-05 to 2022-10-31, status date 2022-08-16, costs in zł, A marks actual dates.

## Calendars

- Project SSK: Mon-Fri 08:00-12:00, 13:00-17:00; Sat-Sun off. Exceptions (off unless hours are given): 2022-08-15 (Wniebowzięcie Najświętszej Maryi Panny), 2022-10-01 (Wszystkich Świętych), 2022-10-11 (Święto Niepodległości).

## Resources

| Resource | Unit | Rate |
| --- | --- | --- |
| Projektant baz danych |  | 80 |
| Programista Front End |  | 60 |
| Programista back end |  | 100 |
| Programista Android |  | 70 |
| Programista IOS |  | 80 |
| Programista IoT |  | 100 |
| Designer |  | 50 |
| Tester 2 |  | 30 |
| Tablet | Jednostka | 1000 |
| Czujniki | Jednostka | 50 |
| Project Manager |  | 60 |
| Tester 1 |  | 30 |
| Amortyzacja tabletu |  |  |
| Amortyzacja czujnika |  |  |

## Schedule

| ID | WBS | Task | Type | Duration | Start | Finish | Predecessors | Complete | Remaining | Baseline start | Baseline finish | Baseline duration | Baseline 1 start | Baseline 1 finish | Total slack | Free slack | Constraint | Resources | Work | Actual work | Cost | Baseline cost | Actual cost | Risk cat |
| --- | --- | --- | --- | --- | --- | --- | --- | --- | --- | --- | --- | --- | --- | --- | --- | --- | --- | --- | --- | --- | --- | --- | --- | --- |
| 1 | 1 | **Zarządzanie** |  | 21d | 2022-07-05 A | 2022-08-02 |  | 99% | 0d | 2022-07-05 | 2022-08-02 | 21d | 2022-07-05 | 2022-08-02 | 0d |  |  |  | 152h | 152h | 9,280 | 9,280 | 9,280 |  |
| 2 | 1.1 | Oszacowanie ryzyko |  | 1d | 2022-07-05 A | 2022-07-05 A |  | 100% |  | 2022-07-05 | 2022-07-05 | 1d | 2022-07-05 | 2022-07-05 |  |  |  | Project Manager [50%] | 8h | 8h | 480 | 480 | 480 |  |
| 3 | 1.2 | Ocena jakości |  | 1d | 2022-07-05 A | 2022-07-05 A | 2SS | 100% |  | 2022-07-05 | 2022-07-05 | 1d | 2022-07-05 | 2022-07-05 |  |  |  | Project Manager [50%] | 8h | 8h | 480 | 480 | 480 |  |
| 4 | 1.3 | Odeslane pzp | milestone | 0d | 2022-07-08 | 2022-07-08 | 5 |  |  | 2022-07-08 | 2022-07-08 | 0d | 2022-07-08 | 2022-07-08 | 17d |  |  |  |  |  |  |  |  |  |
| 5 | 1.4 | Stworzenie PZP |  | 3d | 2022-07-06 A | 2022-07-08 A | 3, 2, 6FF | 100% |  | 2022-07-06 | 2022-07-08 | 3d | 2022-07-06 | 2022-07-08 |  |  | start no earlier than 2022-07-03 | Project Manager | 24h | 24h | 1,440 | 1,440 | 1,440 |  |
| 6 | 1.5 | Konsultacje ze specjalistami |  | 1d | 2022-07-06 A | 2022-07-06 A |  | 100% |  | 2022-07-06 | 2022-07-06 | 1d | 2022-07-06 | 2022-07-06 |  |  |  | Projektant baz danych | 8h | 8h | 640 | 640 | 640 |  |
| 7 | 1.6 | Stworzenie zespołu |  | 3d | 2022-07-11 A | 2022-07-13 A | 5 | 100% |  | 2022-07-11 | 2022-07-13 | 3d | 2022-07-11 | 2022-07-13 |  |  |  | Project Manager [75%] | 24h | 24h | 1,440 | 1,440 | 1,440 |  |
| 8 | 1.7 | Analiza budżetu i zasobów |  | 2d | 2022-07-11 A | 2022-07-12 A | 5 | 100% |  | 2022-07-11 | 2022-07-12 | 2d | 2022-07-11 | 2022-07-12 |  |  |  | Project Manager [25%] | 16h | 16h | 960 | 960 | 960 |  |
| 9 | 1.8 | Stworzenie Harmonogramu |  | 3d | 2022-07-14 A | 2022-07-18 A | 5 | 100% |  | 2022-07-14 | 2022-07-18 | 3d | 2022-07-14 | 2022-07-18 |  |  |  | Project Manager | 24h | 24h | 1,440 | 1,440 | 1,440 |  |
| 10 | 1.9 | Odesłany DIP | milestone | 0d | 2022-07-19 | 2022-07-19 | 11 |  |  | 2022-07-19 | 2022-07-19 | 0d | 2022-07-19 | 2022-07-19 | 10d |  |  |  |  |  |  |  |  |  |
| 11 | 1.10 | Stworzenie DIP |  | 1d | 2022-07-19 A | 2022-07-19 A | 5, 9, 7, 8 | 100% |  | 2022-07-19 | 2022-07-19 | 1d | 2022-07-19 | 2022-07-19 |  |  |  | Project Manager | 8h | 8h | 480 | 480 | 480 |  |
| 12 | 1.11 | Zatwierdzony DIP | milestone | 0d | 2022-08-02 | 2022-08-02 | 13 |  |  | 2022-08-02 | 2022-08-02 | 0d | 2022-08-02 | 2022-08-02 | 0d |  | finish no earlier than 2022-08-02 |  |  |  |  |  |  |  |
| 13 | 1.12 | Zgoda na DIP |  | 4d | 2022-07-20 A | 2022-07-25 A | 11 | 100% |  | 2022-07-20 | 2022-07-25 | 4d | 2022-07-20 | 2022-07-25 |  |  |  | Project Manager | 32h | 32h | 1,920 | 1,920 | 1,920 | F, Z |
| 14 | 2 | **Projektowanie** |  | 18d | 2022-08-03 A | 2022-08-29 | 1 | 44% | 10.05d | 2022-08-03 | 2022-08-26 | 16.5d | 2022-08-03 | 2022-08-26 | 2d | 0d |  |  | 200h | 106h | 15,980 | 12,780 | 8,480 |  |
| 15 | 2.1 | **Analiza biznesowa** |  | 7.5d | 2022-08-03 A | 2022-08-12 |  | 99% | 0d | 2022-08-03 | 2022-08-12 | 7.5d | 2022-08-03 | 2022-08-12 | 0d |  |  |  | 72h | 72h | 5,980 | 5,980 | 5,980 |  |
| 16 | 2.1.1 | Definicja wymagań i ograniczeń |  | 3d | 2022-08-03 A | 2022-08-05 A | 13 | 100% |  | 2022-08-03 | 2022-08-05 | 3d | 2022-08-03 | 2022-08-05 |  |  |  | Programista Android | 24h | 24h | 1,680 | 1,680 | 1,680 |  |
| 17 | 2.1.2 | Słownik pojęć |  | 6h | 2022-08-08 A | 2022-08-08 A | 16 | 100% |  | 2022-08-08 | 2022-08-08 | 6h | 2022-08-08 | 2022-08-08 |  |  |  | Programista Android | 6h | 6h | 420 | 420 | 420 |  |
| 18 | 2.1.3 | Model pojęć |  | 14h | 2022-08-08 A | 2022-08-10 A | 17 | 100% |  | 2022-08-08 | 2022-08-10 | 14h | 2022-08-08 | 2022-08-10 |  |  |  | Programista IoT | 14h | 14h | 1,400 | 1,400 | 1,400 |  |
| 19 | 2.1.4 | Cykl życia obiektu biznesowego |  | 12h | 2022-08-10 A | 2022-08-11 A | 18 | 100% |  | 2022-08-10 | 2022-08-11 | 12h | 2022-08-10 | 2022-08-11 |  |  |  | Programista back end | 12h | 12h | 1,200 | 1,200 | 1,200 |  |
| 20 | 2.1.5 | Architektura procesów biznesowych i przebiegi wybranych |  | 2d | 2022-08-10 A | 2022-08-12 A | 18 | 100% |  | 2022-08-10 | 2022-08-12 | 2d | 2022-08-10 | 2022-08-12 |  |  |  | Programista IOS | 16h | 16h | 1,280 | 1,280 | 1,280 |  |
| 21 | 2.1.6 | Zrealizowana analiza biznesowa | milestone | 0d | 2022-08-12 | 2022-08-12 | 20 |  |  | 2022-08-12 | 2022-08-12 | 0d | 2022-08-12 | 2022-08-12 | 0d |  | finish no earlier than 2022-08-10 |  |  |  |  |  |  |  |
| 22 | 2.2 | **Analiza systemowa** |  | 4.5d | 2022-08-12 A | 2022-08-19 | 15 | 35% | 2.91d | 2022-08-12 | 2022-08-18 | 3d | 2022-08-12 | 2022-08-18 | 2d | 0d |  |  | 96h | 34h | 7,440 | 4,720 | 2,500 |  |
| 23 | 2.2.1 | Model informatyczny |  | 1d | 2022-08-12 A | 2022-08-16 | 20 | 75% | 0.25d | 2022-08-12 | 2022-08-16 | 1d | 2022-08-12 | 2022-08-16 | 5.5d | 3.5d |  | Programista back end | 8h | 6h | 800 | 800 | 600 |  |
| 24 | 2.2.2 | Cykl życia obiektu |  | 4.5d | 2022-08-12 A | 2022-08-19 | 20 | 50% | 2.25d | 2022-08-12 | 2022-08-18 | 3d | 2022-08-12 | 2022-08-16 | 2d | 0d |  | Programista Front End | 36h | 18h | 2,160 | 1,440 | 1,080 |  |
| 25 | 2.2.3 | Model przypadku użycia i przebiegi wybranych |  | 3.5d | 2022-08-12 A | 2022-08-18 | 20 | 14% | 3d | 2022-08-12 | 2022-08-16 | 1d | 2022-08-12 | 2022-08-16 | 3d | 1d |  | Programista IoT | 28h | 4h | 2,800 | 800 | 400 |  |
| 26 | 2.2.4 | Projektowanie architektury i projektu systemu |  | 3d | 2022-08-12 A | 2022-08-19 | 20, 23FF, 24FF, 25FF | 25% | 2.25d | 2022-08-12 | 2022-08-18 | 3d | 2022-08-12 | 2022-08-18 | 2d | 0d |  | Programista Android | 24h | 6h | 1,680 | 1,680 | 420 |  |
| 27 | 2.2.5 | Zrealizowana analiza systemowa | milestone | 0d | 2022-08-19 | 2022-08-19 | 26 |  |  | 2022-08-18 | 2022-08-18 | 0d | 2022-08-18 | 2022-08-18 | 5d |  |  |  |  |  |  |  |  |  |

| ID | WBS | Task | Type | Duration | Start | Finish | Predecessors | Baseline start | Baseline finish | Baseline duration | Baseline 1 start | Baseline 1 finish | Total slack | Free slack | Constraint | Resources | Work | Cost | Baseline cost | Risk cat |
| --- | --- | --- | --- | --- | --- | --- | --- | --- | --- | --- | --- | --- | --- | --- | --- | --- | --- | --- | --- | --- |
| 28 | 2.3 | **Architektura fizyczna** |  | 6d | 2022-08-22 | 2022-08-29 | 22 | 2022-08-18 | 2022-08-26 | 6d | 2022-08-18 | 2022-08-26 | 2d |  |  |  | 32h | 2,560 | 2,080 |  |
| 29 | 2.3.1 | Architektura logiczna |  | 1d | 2022-08-22 | 2022-08-22 | 26 | 2022-08-18 | 2022-08-19 | 1d | 2022-08-18 | 2022-08-19 | 6d | 1d |  |  |  |  |  |  |
| 30 | 2.3.2 | Model klas |  | 1d | 2022-08-22 | 2022-08-22 | 26 | 2022-08-18 | 2022-08-19 | 1d | 2022-08-18 | 2022-08-19 | 6d | 1d |  | Programista back end | 8h | 800 | 800 |  |
| 31 | 2.3.3 | Model danych |  | 2d | 2022-08-22 | 2022-08-23 | 26 | 2022-08-18 | 2022-08-22 | 2d | 2022-08-18 | 2022-08-22 | 5d | 0d |  | Projektant baz danych | 16h | 1,280 | 1,280 |  |
| 32 | 2.3.4 | Wcześniejsze spotkanie z klientem na temat zapewnienia opłaty |  | 1d | 2022-08-22 | 2022-08-22 | 26 |  |  |  |  |  | 10d |  |  | Project Manager | 8h | 480 |  |  |
| 33 | 2.3.5 | Techniczne przypadki użycia i przebiegi wybranych |  | 4d | 2022-08-24 | 2022-08-29 | 29, 30, 31 | 2022-08-22 | 2022-08-26 | 4d | 2022-08-22 | 2022-08-26 | 5d | 0d |  |  |  |  |  |  |
| 34 | 2.3.6 | Zaprojektowanie architektury i projektu systemu | milestone | 0d | 2022-08-29 | 2022-08-29 | 33 | 2022-08-26 | 2022-08-26 | 0d | 2022-08-26 | 2022-08-26 | 5d |  |  |  |  |  |  |  |
| 35 | 2.4 | Koniec projektowania | milestone | 0d | 2022-08-29 | 2022-08-29 | 33 | 2022-08-26 | 2022-08-26 | 0d | 2022-08-26 | 2022-08-26 | 5d | 0d | finish no earlier than 2022-08-22 |  |  |  |  |  |
| 36 | 2.5 | Otrzymanie części opłaty do budowy aplkacji | milestone | 0d | 2022-08-29 | 2022-08-29 | 35 |  |  |  |  |  | 5d |  |  |  |  |  |  | Z, F |
| 37 | 3 | **Budowanie** |  | 17d | 2022-08-30 | 2022-09-21 | 14 | 2022-08-26 | 2022-09-21 | 18.5d | 2022-08-26 | 2022-09-21 | 2d | 0d |  |  | 504h | 44,780 | 36,540 |  |
| 38 | 3.1 | Stworzona baza danych | milestone | 0d | 2022-09-02 | 2022-09-02 | 40 | 2022-08-30 | 2022-08-30 | 0d | 2022-08-30 | 2022-08-30 | 15d |  |  |  |  |  |  |  |
| 39 | 3.2 | Weryfikacja schematu bazy danych |  | 2d | 2022-08-30 | 2022-08-31 | 33 |  |  |  |  |  | 2d | 0d |  | Programista back end; Projektant baz danych | 32h | 2,880 |  |  |
| 40 | 3.3 | Stworzenie bazy danych |  | 2d | 2022-09-01 | 2022-09-02 | 39 | 2022-08-26 | 2022-08-30 | 2d | 2022-08-26 | 2022-08-30 | 2d | 0d |  | Projektant baz danych | 16h | 1,280 | 1,280 | T, W, O |
| 41 | 3.4 | Koniec budowania kodu serwera | milestone | 0d | 2022-09-21 | 2022-09-21 | 43 | 2022-09-15 | 2022-09-15 | 0d | 2022-09-15 | 2022-09-15 | 2d |  |  |  |  |  |  |  |
| 42 | 3.5 | Analiza oczekiwanych kosztów obliczeniowych |  | 1d | 2022-09-08 | 2022-09-08 | 43SS |  |  |  |  |  | 11d |  | start no earlier than 2022-09-08 | Programista back end | 8h | 800 |  |  |
| 43 | 3.6 | Stworzenie kodu serwera obsługującą bazę danych |  | 12d | 2022-09-05 | 2022-09-21 | 40 | 2022-08-30 | 2022-09-15 | 12d | 2022-08-30 | 2022-09-15 | 2d | 0d |  | Programista back end | 96h | 9,600 | 9,600 |  |
| 44 | 3.7 | Gotowa i działająca aplikacja mobilna i webowa do przeglądania danych | milestone | 0d | 2022-09-15 | 2022-09-15 | 47, 48 | 2022-09-08 | 2022-09-08 | 0d | 2022-09-08 | 2022-09-08 | 6d |  |  |  |  |  |  |  |
| 45 | 3.8 | Projektowanie wyglądu sprzętu, bezpośrednio pracujące z koniem lub obok konia |  | 5d | 2022-09-01 | 2022-09-07 | 40SS |  |  |  |  |  | 12d |  |  | Designer | 40h | 2,000 |  |  |
| 46 | 3.9 | Sprawdzenie zaplanowanego API serwera |  | 2d | 2022-09-01 | 2022-09-02 | 40SS |  |  |  |  |  | 6d | 0d |  | Programista back end; Programista Front End | 32h | 2,560 |  |  |
| 47 | 3.10 | Stworzenie aplikacji klienta webowego |  | 7d | 2022-09-05 | 2022-09-13 | 43SF, 46 | 2022-08-26 | 2022-09-06 | 7d | 2022-08-26 | 2022-09-06 | 8d | 2d | start no earlier than 2022-08-01 | Programista Front End | 56h | 3,360 | 3,360 |  |
| 48 | 3.11 | Stworzenie aplikacji klienta dla urządzeń mobilnych |  | 9d | 2022-09-05 | 2022-09-15 | 43SF, 46 | 2022-08-26 | 2022-09-08 | 9d | 2022-08-26 | 2022-09-08 | 6d | 0d |  | Programista IOS; Programista Android; Tablet [2 Jednostka] | 144h | 12,800 | 12,800 |  |
| 49 | 3.12 | Stworzone oprogramowanie do mikroprocesorów | milestone | 0d | 2022-09-14 | 2022-09-14 | 50 | 2022-09-09 | 2022-09-09 | 0d | 2022-09-09 | 2022-09-09 | 7d |  |  |  |  |  |  |  |
| 50 | 3.13 | Stworzenie oprogramowania do mikroprocesorów |  | 10d | 2022-09-01 | 2022-09-14 | 43SF, 40SS | 2022-08-26 | 2022-09-09 | 10d | 2022-08-26 | 2022-09-09 | 7d | 0d |  | Programista IoT; Czujniki [30 Jednostka] | 80h | 9,500 | 9,500 |  |
| 51 | 3.14 | Zbudowany system | milestone | 0d | 2022-09-21 | 2022-09-21 | 43 | 2022-09-21 | 2022-09-21 | 0d | 2022-09-21 | 2022-09-21 | 2d |  | finish no earlier than 2022-09-21 |  |  |  |  |  |

| ID | WBS | Task | Type | Duration | Start | Finish | Predecessors | Baseline start | Baseline finish | Baseline duration | Baseline 1 start | Baseline 1 finish | Total slack | Free slack | Constraint | Resources | Work | Cost | Baseline cost | Risk cat |
| --- | --- | --- | --- | --- | --- | --- | --- | --- | --- | --- | --- | --- | --- | --- | --- | --- | --- | --- | --- | --- |
| 52 | 4 | **Testowanie** |  | 9d | 2022-09-22 | 2022-10-04 | 37 | 2022-09-22 | 2022-10-04 | 9d | 2022-09-22 | 2022-10-03 | 0d |  |  |  | 112h | 11,360 | 10,880 |  |
| 53 | 4.1 | Projektowanie testów I wstępne przygotowanie danych |  | 2d | 2022-09-22 | 2022-09-23 | 43 |  |  |  |  |  | 2d | 0d |  | Tester 2 | 16h | 480 |  |  |
| 54 | 4.2 | Testowanie operacji na bazie danych |  | 3d | 2022-09-26 | 2022-09-28 | 53 | 2022-09-22 | 2022-09-26 | 3d | 2022-09-22 | 2022-09-26 | 4d | 0d |  | Tester 2 | 24h | 720 | 720 | W, O, F |
| 55 | 4.3 | Testowanie aplikacji client do pobierania danych |  | 2d | 2022-09-29 | 2022-09-30 | 54 | 2022-09-29 | 2022-09-30 | 2d | 2022-09-29 | 2022-09-30 | 4d | 2d | start no earlier than 2022-09-29 | Tester 1; Tablet [3 Jednostka] | 16h | 3,480 | 3,480 | W, O, F |
| 56 | 4.4 | Testowanie aplikacji client do wprowadzenia danych |  | 2d | 2022-09-29 | 2022-09-30 | 54 | 2022-09-27 | 2022-09-28 | 2d | 2022-09-27 | 2022-09-28 | 4d |  |  | Tester 2; Tablet [3 Jednostka] | 16h | 3,480 | 3,480 |  |
| 57 | 4.5 | Testowanie poprawności pracy urządzeń IoT |  | 2d | 2022-09-22 | 2022-09-23 | 50 | 2022-09-22 | 2022-09-23 | 2d | 2022-09-22 | 2022-09-23 | 6d | 0d |  | Tester 1 | 16h | 480 | 480 | W, T, F |
| 58 | 4.6 | Testowanie poprawności przekazywania danych od IoT do bazy |  | 3d | 2022-09-26 | 2022-09-28 | 57 | 2022-09-26 | 2022-09-28 | 3d | 2022-09-27 | 2022-10-03 | 6d | 4d |  | Tester 1; Czujniki [40 Jednostka] | 24h | 2,720 | 2,720 |  |
| 59 | 4.7 | Zrealizowanie testów | milestone | 0d | 2022-10-04 | 2022-10-04 | 55 | 2022-10-04 | 2022-10-04 | 0d |  |  | 0d |  | finish no earlier than 2022-10-04 |  |  |  |  |  |
| 60 | 5 | **Wdradzanie** |  | 18d | 2022-10-05 | 2022-10-31 | 52 | 2022-10-05 | 2022-10-29 | 17d | 2022-10-04 | 2022-10-29 | 0d |  |  |  | 348h | 27,440 | 13,120 |  |
| 61 | 5.1 | Koniec tworzenia dokumentacji | milestone | 0d | 2022-10-19 | 2022-10-19 | 63, 64, 65 | 2022-10-10 | 2022-10-10 | 0d | 2022-10-07 | 2022-10-07 | 8.5d |  |  |  |  |  |  |  |
| 62 | 5.2 | Analiza wytworzonego kodu |  | 3d | 2022-10-05 | 2022-10-07 | 58 |  |  |  |  |  | 0d |  |  | Programista Android; Programista back end; Programista Front End; Programista IOS; Programista IoT | 120h | 9,840 |  |  |
| 63 | 5.3 | Dokumentacja oprogramowania |  | 7.5d | 2022-10-10 | 2022-10-19 | 62 | 2022-10-05 | 2022-10-07 | 3d | 2022-10-04 | 2022-10-06 | 0d |  |  | Programista back end; Projektant baz danych | 112h | 10,000 | 4,320 | O, T |
| 64 | 5.4 | Dokumentacja GUI |  | 2d | 2022-10-10 | 2022-10-12 | 63SS | 2022-10-05 | 2022-10-06 | 2d | 2022-10-04 | 2022-10-05 | 4.5d |  |  | Programista Front End | 16h | 960 | 960 |  |
| 65 | 5.5 | Dokumentacja urządzeń IoT |  | 4d | 2022-10-10 | 2022-10-14 | 63SS | 2022-10-05 | 2022-10-10 | 4d | 2022-10-04 | 2022-10-07 | 2.5d |  |  | Programista IOS | 32h | 2,560 | 2,560 |  |
| 66 | 5.6 | Sprawdzone efekty systemu | milestone | 0d | 2022-10-31 | 2022-10-31 | 67 | 2022-10-26 | 2022-10-26 | 0d | 2022-10-25 | 2022-10-25 | 0d |  |  |  |  |  |  |  |
| 67 | 5.7 | Sprawdzanie i porównywanie efektów systemu |  | 8.5d | 2022-10-19 | 2022-10-31 | 63, 64, 65 | 2022-10-12 | 2022-10-26 | 11d | 2022-10-10 | 2022-10-25 | 0d |  |  | Project Manager | 68h | 4,080 | 5,280 |  |
| 68 | 5.8 | Koniec projektu | milestone | 0d | 2022-10-31 | 2022-10-31 | 67 | 2022-10-29 | 2022-10-29 | 0d | 2022-10-29 | 2022-10-29 | 0d |  | finish no earlier than 2022-10-29 |  |  |  |  |  |
