# System śledzenia koni resources

Schedule from MS Project, 2022-07-05 to 2022-10-29, status date 2022-08-16, costs in zł, A marks actual dates.

## Calendars

- Project SSK: Mon-Fri 08:00-12:00, 13:00-17:00; Sat-Sun off. Exceptions (off unless hours are given): 2022-08-15 (Wniebowzięcie Najświętszej Maryi Panny), 2022-10-01 (Wszystkich Świętych), 2022-10-11 (Święto Niepodległości).

## Resources

| Resource | Unit | Rate |
| --- | --- | --- |
| Projektant baz danych |  | 80 |
| Programista Front End |  | 60 |
| Programista back end |  | 100 |
| Programista Android |  | 70 |
| Programista IOS |  | 80 |
| Programista IoT |  | 100 |
| Designer GUI |  | 50 |
| Tester 2 |  | 30 |
| Wynajmowanie serwerów |  |  |
| Tablet | Jednostka | 1000 |
| Czujniki | Jednostka | 50 |
| Project Manager |  | 60 |
| Tester 1 |  | 30 |

## Schedule

| ID | WBS | Task | Type | Duration | Start | Finish | Predecessors | Complete | Remaining | Baseline start | Baseline finish | Baseline duration | Baseline 1 start | Baseline 1 finish | Total slack | Free slack | Constraint | Resources | Work | Actual work | Cost | Baseline cost | Actual cost |
| --- | --- | --- | --- | --- | --- | --- | --- | --- | --- | --- | --- | --- | --- | --- | --- | --- | --- | --- | --- | --- | --- | --- | --- |
| 1 | 1 | **Zarządzanie** |  | 21d | 2022-07-05 A | 2022-08-02 |  | 99% | 0d | 2022-07-05 | 2022-08-02 | 21d | 2022-07-05 | 2022-08-02 | 0d |  |  |  | 152h | 152h | 9,280 | 9,280 | 9,280 |
| 2 | 1.1 | Oszacowanie ryzyko |  | 1d | 2022-07-05 A | 2022-07-05 A |  | 100% |  | 2022-07-05 | 2022-07-05 | 1d | 2022-07-05 | 2022-07-05 |  |  |  | Project Manager [50%] | 8h | 8h | 480 | 480 | 480 |
| 3 | 1.2 | Ocena jakości |  | 1d | 2022-07-05 A | 2022-07-05 A | 2SS | 100% |  | 2022-07-05 | 2022-07-05 | 1d | 2022-07-05 | 2022-07-05 |  |  |  | Project Manager [50%] | 8h | 8h | 480 | 480 | 480 |
| 4 | 1.3 | Odeslane pzp | milestone | 0d | 2022-07-08 | 2022-07-08 | 5 |  |  | 2022-07-08 | 2022-07-08 | 0d | 2022-07-08 | 2022-07-08 | 17d |  |  |  |  |  |  |  |  |
| 5 | 1.4 | Stworzenie PZP |  | 3d | 2022-07-06 A | 2022-07-08 A | 3, 2, 6FF | 100% |  | 2022-07-06 | 2022-07-08 | 3d | 2022-07-06 | 2022-07-08 |  |  | start no earlier than 2022-07-03 | Project Manager | 24h | 24h | 1,440 | 1,440 | 1,440 |
| 6 | 1.5 | Konsultacje ze specjalistami |  | 1d | 2022-07-06 A | 2022-07-06 A |  | 100% |  | 2022-07-06 | 2022-07-06 | 1d | 2022-07-06 | 2022-07-06 |  |  |  | Projektant baz danych | 8h | 8h | 640 | 640 | 640 |
| 7 | 1.6 | Stworzenie zespołu |  | 3d | 2022-07-11 A | 2022-07-13 A | 5 | 100% |  | 2022-07-11 | 2022-07-13 | 3d | 2022-07-11 | 2022-07-13 |  |  |  | Project Manager [75%] | 24h | 24h | 1,440 | 1,440 | 1,440 |
| 8 | 1.7 | Analiza budżetu i zasobów |  | 2d | 2022-07-11 A | 2022-07-12 A | 5 | 100% |  | 2022-07-11 | 2022-07-12 | 2d | 2022-07-11 | 2022-07-12 |  |  |  | Project Manager [25%] | 16h | 16h | 960 | 960 | 960 |
| 9 | 1.8 | Stworzenie Harmonogramu |  | 3d | 2022-07-14 A | 2022-07-18 A | 5 | 100% |  | 2022-07-14 | 2022-07-18 | 3d | 2022-07-14 | 2022-07-18 |  |  |  | Project Manager | 24h | 24h | 1,440 | 1,440 | 1,440 |
| 10 | 1.9 | Odesłany DIP | milestone | 0d | 2022-07-19 | 2022-07-19 | 11 |  |  | 2022-07-19 | 2022-07-19 | 0d | 2022-07-19 | 2022-07-19 | 10d |  |  |  |  |  |  |  |  |
| 11 | 1.10 | Stworzenie DIP |  | 1d | 2022-07-19 A | 2022-07-19 A | 5, 9, 7, 8 | 100% |  | 2022-07-19 | 2022-07-19 | 1d | 2022-07-19 | 2022-07-19 |  |  |  | Project Manager | 8h | 8h | 480 | 480 | 480 |
| 12 | 1.11 | Zatwierdzony DIP | milestone | 0d | 2022-08-02 | 2022-08-02 | 13 |  |  | 2022-08-02 | 2022-08-02 | 0d | 2022-08-02 | 2022-08-02 | 0d |  | finish no earlier than 2022-08-02 |  |  |  |  |  |  |
| 13 | 1.12 | Zgoda na DIP |  | 4d | 2022-07-20 A | 2022-07-25 A | 11 | 100% |  | 2022-07-20 | 2022-07-25 | 4d | 2022-07-20 | 2022-07-25 |  |  |  | Project Manager | 32h | 32h | 1,920 | 1,920 | 1,920 |
| 14 | 2 | **Projektowanie** |  | 18d | 2022-08-03 A | 2022-08-29 | 1 | 46% | 9.78d | 2022-08-03 | 2022-08-26 | 16.5d | 2022-08-03 | 2022-08-26 | 9d | 0d |  |  | 192h | 106h | 15,500 | 12,780 | 8,480 |
| 15 | 2.1 | **Analiza biznesowa** |  | 7.5d | 2022-08-03 A | 2022-08-12 |  | 99% | 0d | 2022-08-03 | 2022-08-12 | 7.5d | 2022-08-03 | 2022-08-12 | 0d |  |  |  | 72h | 72h | 5,980 | 5,980 | 5,980 |
| 16 | 2.1.1 | Definicja wymagań i ograniczeń |  | 3d | 2022-08-03 A | 2022-08-05 A | 13 | 100% |  | 2022-08-03 | 2022-08-05 | 3d | 2022-08-03 | 2022-08-05 |  |  |  | Programista Android | 24h | 24h | 1,680 | 1,680 | 1,680 |
| 17 | 2.1.2 | Słownik pojęć |  | 6h | 2022-08-08 A | 2022-08-08 A | 16 | 100% |  | 2022-08-08 | 2022-08-08 | 6h | 2022-08-08 | 2022-08-08 |  |  |  | Programista Android | 6h | 6h | 420 | 420 | 420 |
| 18 | 2.1.3 | Model pojęć |  | 14h | 2022-08-08 A | 2022-08-10 A | 17 | 100% |  | 2022-08-08 | 2022-08-10 | 14h | 2022-08-08 | 2022-08-10 |  |  |  | Programista IoT | 14h | 14h | 1,400 | 1,400 | 1,400 |
| 19 | 2.1.4 | Cykl życia obiektu biznesowego |  | 12h | 2022-08-10 A | 2022-08-11 A | 18 | 100% |  | 2022-08-10 | 2022-08-11 | 12h | 2022-08-10 | 2022-08-11 |  |  |  | Programista back end | 12h | 12h | 1,200 | 1,200 | 1,200 |
| 20 | 2.1.5 | Architektura procesów biznesowych i przebiegi wybranych |  | 2d | 2022-08-10 A | 2022-08-12 A | 18 | 100% |  | 2022-08-10 | 2022-08-12 | 2d | 2022-08-10 | 2022-08-12 |  |  |  | Programista IOS | 16h | 16h | 1,280 | 1,280 | 1,280 |
| 21 | 2.1.6 | Zrealizowana analiza biznesowa | milestone | 0d | 2022-08-12 | 2022-08-12 | 20 |  |  | 2022-08-12 | 2022-08-12 | 0d | 2022-08-12 | 2022-08-12 | 0d |  | finish no earlier than 2022-08-10 |  |  |  |  |  |  |
| 22 | 2.2 | **Analiza systemowa** |  | 4.5d | 2022-08-12 A | 2022-08-19 | 15 | 35% | 2.91d | 2022-08-12 | 2022-08-18 | 3d | 2022-08-12 | 2022-08-18 | 9d | 0d |  |  | 96h | 34h | 7,440 | 4,720 | 2,500 |
| 23 | 2.2.1 | Model informatyczny |  | 1d | 2022-08-12 A | 2022-08-16 | 20 | 75% | 0.25d | 2022-08-12 | 2022-08-16 | 1d | 2022-08-12 | 2022-08-16 | 12.5d | 3.5d |  | Programista back end | 8h | 6h | 800 | 800 | 600 |
| 24 | 2.2.2 | Cykl życia obiektu |  | 4.5d | 2022-08-12 A | 2022-08-19 | 20 | 50% | 2.25d | 2022-08-12 | 2022-08-18 | 3d | 2022-08-12 | 2022-08-16 | 9d | 0d |  | Programista Front End | 36h | 18h | 2,160 | 1,440 | 1,080 |
| 25 | 2.2.3 | Model przypadku użycia i przebiegi wybranych |  | 3.5d | 2022-08-12 A | 2022-08-18 | 20 | 14% | 3d | 2022-08-12 | 2022-08-16 | 1d | 2022-08-12 | 2022-08-16 | 10d | 1d |  | Programista IoT | 28h | 4h | 2,800 | 800 | 400 |
| 26 | 2.2.4 | Projektowanie architektury i projektu systemu |  | 3d | 2022-08-12 A | 2022-08-19 | 20, 23FF, 24FF, 25FF | 25% | 2.25d | 2022-08-12 | 2022-08-18 | 3d | 2022-08-12 | 2022-08-18 | 9d | 0d |  | Programista Android | 24h | 6h | 1,680 | 1,680 | 420 |
| 27 | 2.2.5 | Zrealizowana analiza systemowa | milestone | 0d | 2022-08-19 | 2022-08-19 | 26 |  |  | 2022-08-18 | 2022-08-18 | 0d | 2022-08-18 | 2022-08-18 | 7d |  |  |  |  |  |  |  |  |

| ID | WBS | Task | Type | Duration | Start | Finish | Predecessors | Baseline start | Baseline finish | Baseline duration | Baseline 1 start | Baseline 1 finish | Total slack | Free slack | Constraint | Resources | Work | Cost | Baseline cost |
| --- | --- | --- | --- | --- | --- | --- | --- | --- | --- | --- | --- | --- | --- | --- | --- | --- | --- | --- | --- |
| 28 | 2.3 | **Architektura fizyczna** |  | 6d | 2022-08-22 | 2022-08-29 | 22 | 2022-08-18 | 2022-08-26 | 6d | 2022-08-18 | 2022-08-26 | 9d |  |  |  | 24h | 2,080 | 2,080 |
| 29 | 2.3.1 | Architektura logiczna |  | 1d | 2022-08-22 | 2022-08-22 | 26 | 2022-08-18 | 2022-08-19 | 1d | 2022-08-18 | 2022-08-19 | 8d | 1d |  |  |  |  |  |
| 30 | 2.3.2 | Model klas |  | 1d | 2022-08-22 | 2022-08-22 | 26 | 2022-08-18 | 2022-08-19 | 1d | 2022-08-18 | 2022-08-19 | 8d | 1d |  | Programista back end | 8h | 800 | 800 |
| 31 | 2.3.3 | Model danych |  | 2d | 2022-08-22 | 2022-08-23 | 26 | 2022-08-18 | 2022-08-22 | 2d | 2022-08-18 | 2022-08-22 | 7d | 0d |  | Projektant baz danych | 16h | 1,280 | 1,280 |
| 32 | 2.3.4 | Techniczne przypadki użycia i przebiegi wybranych |  | 4d | 2022-08-24 | 2022-08-29 | 29, 30, 31 | 2022-08-22 | 2022-08-26 | 4d | 2022-08-22 | 2022-08-26 | 7d | 0d |  |  |  |  |  |
| 33 | 2.3.5 | Zaprojektowanie architektury i projektu systemu | milestone | 0d | 2022-08-29 | 2022-08-29 | 32 | 2022-08-26 | 2022-08-26 | 0d | 2022-08-26 | 2022-08-26 | 7d |  |  |  |  |  |  |
| 34 | 2.4 | Koniec projektowania | milestone | 0d | 2022-08-29 | 2022-08-29 | 32 | 2022-08-26 | 2022-08-26 | 0d | 2022-08-26 | 2022-08-26 | 7d |  | finish no earlier than 2022-08-22 |  |  |  |  |
| 35 | 3 | **Budowanie** |  | 17d | 2022-08-30 | 2022-09-21 | 14 | 2022-08-26 | 2022-09-21 | 18.5d | 2022-08-26 | 2022-09-21 | 6d | 0d |  |  | 392h | 36,540 | 36,540 |
| 36 | 3.1 | Stworzona baza danych | milestone | 0d | 2022-08-31 | 2022-08-31 | 37 | 2022-08-30 | 2022-08-30 | 0d | 2022-08-30 | 2022-08-30 | 19d |  |  |  |  |  |  |
| 37 | 3.2 | Stworzenie bazy danych |  | 2d | 2022-08-30 | 2022-08-31 | 32 | 2022-08-26 | 2022-08-30 | 2d | 2022-08-26 | 2022-08-30 | 7d | 0d |  | Projektant baz danych | 16h | 1,280 | 1,280 |
| 38 | 3.3 | Koniec budowania kodu serwera | milestone | 0d | 2022-09-16 | 2022-09-16 | 39 | 2022-09-15 | 2022-09-15 | 0d | 2022-09-15 | 2022-09-15 | 7d |  |  |  |  |  |  |
| 39 | 3.4 | Stworzenie kodu serwera obsługującą bazę danych |  | 12d | 2022-09-01 | 2022-09-16 | 37 | 2022-08-30 | 2022-09-15 | 12d | 2022-08-30 | 2022-09-15 | 7d | 0d |  | Programista back end | 96h | 9,600 | 9,600 |
| 40 | 3.5 | Gotowa i działająca aplikacja mobilna i webowa do przeglądania danych | milestone | 0d | 2022-09-09 | 2022-09-09 | 41, 42 | 2022-09-08 | 2022-09-08 | 0d | 2022-09-08 | 2022-09-08 | 12d |  |  |  |  |  |  |
| 41 | 3.6 | Stworzenie aplikacji klienta webowego |  | 7d | 2022-08-30 | 2022-09-07 | 39SF, 37SS | 2022-08-26 | 2022-09-06 | 7d | 2022-08-26 | 2022-09-06 | 14d | 2d | start no earlier than 2022-08-01 | Programista Front End | 56h | 3,360 | 3,360 |
| 42 | 3.7 | Stworzenie aplikacji klienta dla urządzeń mobilnych |  | 9d | 2022-08-30 | 2022-09-09 | 39SF, 37SS | 2022-08-26 | 2022-09-08 | 9d | 2022-08-26 | 2022-09-08 | 12d | 0d |  | Programista IOS; Programista Android; Tablet [2 Jednostka] | 144h | 12,800 | 12,800 |
| 43 | 3.8 | Stworzone oprogramowanie do mikroprocesorów | milestone | 0d | 2022-09-12 | 2022-09-12 | 44 | 2022-09-09 | 2022-09-09 | 0d | 2022-09-09 | 2022-09-09 | 11d |  |  |  |  |  |  |
| 44 | 3.9 | Stworzenie oprogramowania do mikroprocesorów |  | 10d | 2022-08-30 | 2022-09-12 | 39SF, 37SS | 2022-08-26 | 2022-09-09 | 10d | 2022-08-26 | 2022-09-09 | 11d | 0d |  | Programista IoT; Czujniki [30 Jednostka] | 80h | 9,500 | 9,500 |
| 45 | 3.10 | Zbudowany system | milestone | 0d | 2022-09-21 | 2022-09-21 | 39 | 2022-09-21 | 2022-09-21 | 0d | 2022-09-21 | 2022-09-21 | 6d |  | finish no earlier than 2022-09-21 |  |  |  |  |
| 46 | 4 | **Testowanie** |  | 9d | 2022-09-22 | 2022-10-04 | 35 | 2022-09-22 | 2022-10-04 | 9d | 2022-09-22 | 2022-10-03 | 2d | 0d |  |  | 96h | 10,880 | 10,880 |
| 47 | 4.1 | Testowanie operacji na bazie danych |  | 3d | 2022-09-22 | 2022-09-26 | 39 | 2022-09-22 | 2022-09-26 | 3d | 2022-09-22 | 2022-09-26 | 4d | 0d |  | Tester 2 | 24h | 720 | 720 |
| 48 | 4.2 | Testowanie aplikacji client do pobierania danych |  | 2d | 2022-09-29 | 2022-09-30 | 47 | 2022-09-29 | 2022-09-30 | 2d | 2022-09-29 | 2022-09-30 | 2d |  | start no earlier than 2022-09-29 | Tester 1; Tablet [3 Jednostka] | 16h | 3,480 | 3,480 |
| 49 | 4.3 | Testowanie aplikacji client do wprowadzenia danych |  | 2d | 2022-09-27 | 2022-09-28 | 47 | 2022-09-27 | 2022-09-28 | 2d | 2022-09-27 | 2022-09-28 | 4d |  |  | Tester 2; Tablet [3 Jednostka] | 16h | 3,480 | 3,480 |
| 50 | 4.4 | Testowanie poprawności pracy urządzeń IoT |  | 2d | 2022-09-22 | 2022-09-23 | 44 | 2022-09-22 | 2022-09-23 | 2d | 2022-09-22 | 2022-09-23 | 4d | 0d |  | Tester 1 | 16h | 480 | 480 |
| 51 | 4.5 | Testowanie poprawności przekazywania danych od IoT do bazy |  | 3d | 2022-09-26 | 2022-09-28 | 50 | 2022-09-26 | 2022-09-28 | 3d | 2022-09-27 | 2022-10-03 | 4d |  |  | Tester 1; Czujniki [40 Jednostka] | 24h | 2,720 | 2,720 |
| 52 | 4.6 | Zrealizowanie testów | milestone | 0d | 2022-10-04 | 2022-10-04 | 48 | 2022-10-04 | 2022-10-04 | 0d |  |  | 2d |  | finish no earlier than 2022-10-04 |  |  |  |  |

| ID | WBS | Task | Type | Duration | Start | Finish | Predecessors | Baseline start | Baseline finish | Baseline duration | Baseline 1 start | Baseline 1 finish | Total slack | Free slack | Constraint | Resources | Work | Cost | Baseline cost |
| --- | --- | --- | --- | --- | --- | --- | --- | --- | --- | --- | --- | --- | --- | --- | --- | --- | --- | --- | --- |
| 53 | 5 | **Wdradzanie** |  | 17d | 2022-10-05 | 2022-10-29 | 46 | 2022-10-05 | 2022-10-29 | 17d | 2022-10-04 | 2022-10-29 | 0d |  |  |  | 228h | 17,600 | 13,120 |
| 54 | 5.1 | Koniec tworzenia dokumentacji | milestone | 0d | 2022-10-14 | 2022-10-14 | 55, 56, 57 | 2022-10-10 | 2022-10-10 | 0d | 2022-10-07 | 2022-10-07 | 11d |  |  |  |  |  |  |
| 55 | 5.2 | Dokumentacja oprogramowania |  | 7.5d | 2022-10-05 | 2022-10-14 | 51 | 2022-10-05 | 2022-10-07 | 3d | 2022-10-04 | 2022-10-06 | 2d | 0d |  | Programista back end; Projektant baz danych | 112h | 10,000 | 4,320 |
| 56 | 5.3 | Dokumentacja GUI |  | 2d | 2022-10-05 | 2022-10-06 | 55SS | 2022-10-05 | 2022-10-06 | 2d | 2022-10-04 | 2022-10-05 | 4.5d |  |  | Programista Front End | 16h | 960 | 960 |
| 57 | 5.4 | Dokumentacja urządzeń IoT |  | 4d | 2022-10-05 | 2022-10-10 | 55SS | 2022-10-05 | 2022-10-10 | 4d | 2022-10-04 | 2022-10-07 | 2.5d |  |  | Programista IOS | 32h | 2,560 | 2,560 |
| 58 | 5.5 | Sprawdzone efekty systemu | milestone | 0d | 2022-10-26 | 2022-10-26 | 59 | 2022-10-26 | 2022-10-26 | 0d | 2022-10-25 | 2022-10-25 | 2d |  |  |  |  |  |  |
| 59 | 5.6 | Sprawdzanie i porównywanie efektów systemu |  | 8.5d | 2022-10-14 | 2022-10-26 | 55, 56, 57 | 2022-10-12 | 2022-10-26 | 11d | 2022-10-10 | 2022-10-25 | 2d | 0d |  | Project Manager | 68h | 4,080 | 5,280 |
| 60 | 5.7 | Koniec projektu | milestone | 0d | 2022-10-29 | 2022-10-29 | 59 | 2022-10-29 | 2022-10-29 | 0d | 2022-10-29 | 2022-10-29 | 0d |  | finish no earlier than 2022-10-29 |  |  |  |  |
